Schedule from GanttProject, 2024-03-25 to 2025-03-12.

## Calendars

- Project calendar: Mon-Fri working; Sat-Sun off.

## Schedule

| ID | WBS | Task | Duration | Start | Finish | Predecessors |
| --- | --- | --- | --- | --- | --- | --- |
| 1 | 1 | **Etapa 001** | 141d | 2024-03-25 | 2024-10-07 |  |
| 2 | 1.1 | **DP001-Facturacion Almacen Simple** | 72d | 2024-03-25 | 2024-07-02 |  |
| 3 | 1.1.1 | Definicion de tecnologia | 2d | 2024-03-25 | 2024-03-26 |  |
| 4 | 1.1.2 | Preparacion del ambiente de trabajo | 2d | 2024-03-27 | 2024-03-28 | 3 |
| 5 | 1.1.3 | Diseño y programacion de las interfaces graficas | 22d | 2024-03-29 | 2024-04-29 | 4 |
| 6 | 1.1.4 | Modelado de la base de datos | 3d | 2024-04-30 | 2024-05-02 | 5 |
| 7 | 1.1.5 | Programacion del negocio (Backend) | 23d | 2024-05-03 | 2024-06-04 | 6 |
| 8 | 1.1.6 | Integracion con SUNAT | 20d | 2024-06-05 | 2024-07-02 | 7 |
| 9 | 1.2 | **DP002-Facturacion - Balanza** | 8d | 2024-07-03 | 2024-07-12 | 2 |
| 10 | 1.2.1 | Integracion Depovent - Nube | 8d | 2024-07-03 | 2024-07-12 | 8 |
| 11 | 1.3 | **DP003 - Facturacion-Operaciones** | 61d | 2024-07-15 | 2024-10-07 | 9 |
| 12 | 1.3.1 | Diseño y programacion de las interfaces graficas | 24d | 2024-07-15 | 2024-08-15 | 10 |
| 13 | 1.3.2 | Modelado de la base de datos | 4d | 2024-08-16 | 2024-08-21 | 12 |
| 14 | 1.3.3 | Programacion del negocio (Backend) | 26d | 2024-08-22 | 2024-09-26 | 13 |
| 15 | 1.3.4 | Integracion con SUNAT | 7d | 2024-09-27 | 2024-10-07 | 14 |
| 16 | 2 | **Etapa 002** | 43d | 2024-10-08 | 2024-12-05 |  |
| 17 | 2.1 | **DP004 - Cobranzas** | 43d | 2024-10-08 | 2024-12-05 |  |
| 18 | 2.1.1 | Diseño y programacion de las interfaces graficas | 18d | 2024-10-08 | 2024-10-31 | 15 |
| 19 | 2.1.2 | Modelado de la base de datos | 3d | 2024-11-01 | 2024-11-05 | 18 |
| 20 | 2.1.3 | Programacion del negocio (Backend) | 22d | 2024-11-06 | 2024-12-05 | 19 |
| 21 | 3 | **Etapa 003** | 69d | 2024-12-06 | 2025-03-12 |  |
| 22 | 3.1 | **DP005 - Seguridad** | 23d | 2024-12-06 | 2025-01-07 | 16 |
| 23 | 3.1.1 | Diseño y programacion de las interfaces graficas | 10d | 2024-12-06 | 2024-12-19 |  |
| 24 | 3.1.2 | Modelado de la base de datos | 1d | 2024-12-20 | 2024-12-20 | 23 |
| 25 | 3.1.3 | Programacion del negocio (Backend) | 12d | 2024-12-23 | 2025-01-07 | 24 |

Notes:
- 2: ModuloDP001 - Almacen Simple: Modulo que permite realizar la facturacion correspondiente al servicio de almacen simple, a su vez que este estara integrado con SUNAT y el envio de la informacion sera en linea y tiempo real.
- 3: Tarea inicial que se realiza para la identificacion de la mejor tecnologia cloud (nube), lenguaje de programacion backend, lenguaje de programacion fronted, base de datos y servidor de aplicaciones para el proyecto del ERP de DEPOVENT
- 4: Tarea que consiste en la preparacion del entorno de trabajo o desarrollo, instalacion de la base de datos, servidor de aplicaciones, tecnologia de desarrollo, codigo fuente, repositorio de codigo fuente, entre otros puntos mas necesarios para el ambiente de trabajo
- 5: Tarea con consiste en la programacion de las pantallas que corresponde al modulo DP001, estas pantallas contendran formularios para el ingreso de informacion del servicio y registro de la factura
- 6: Tarea que consiste el el modelado de la base de datos es decir la creacion de las tablas que contendran la informacion que sea registrada
- 7: tarea que consiste en la programacion backend del negocio mediante el uso de servicios web, programcionn reactiva, y vinculacion con la base de datos y a su vez con las interfaces graficas (Pantallas)
- 8: tarea que consiste en la comunicacion en linea con la SUNAT para el envio de los datos de factura, esto se tendra que certificar por la SUNAT, es decir Depovent tendra su propio sistema certificado y validado por SUNAT
- 9: DP002 - De acuerdo a la ultima reunion se busca reducir el tiempo dado ello se puede continuar con el uso del actual software, dado que el uso del sistema esta ligado a los drivers de balanza los cuales estan instalados en la pc, lo que si es necesario es crear una conexion entre depovent y la nube, esta conexion va a estar observado nuevos registros de balanza y automaticamente los va a enviar a la base de datos de la nube
- 10: Desarrollo de la integracion entre el sistema actual de balanza con el fin de replicar la informacion que se registra actualmente
- 11: ModuloDP003 - Servicio de Operaciones: Modulo que permite realizar la facturacion correspondiente al servicio de Alquiler de montacarga, maniobra, entre otros que realize el area de operaciones, a su vez que este estara integrado con SUNAT y el envio de la informacion sera en linea y tiempo real.
- 12: Tarea con consiste en la programacion de las pantallas que corresponde al modulo DP003, estas pantallas contendran formularios para el ingreso de informacion del servicio y registro de la factura
- 13: Tarea que consiste el el modelado de la base de datos es decir la creacion de las tablas que contendran la informacion que sea registrada
- 14: tarea que consiste en la programacion backend del negocio mediante el uso de servicios web, programcionn reactiva, y vinculacion con la base de datos y a su vez con las interfaces graficas (Pantallas)
- 15: tarea que consiste en la comunicacion en linea con la SUNAT para el envio de los datos de factura, esto se tendra que certificar por la SUNAT, es decir Depovent tendra su propio sistema certificado y validado por SUNAT
- 17: DP004 - Modulo de cobranzas que permite poder realizar el proceso de cobranzas y que obtiene su informacion inicial de los sistemas de facturacion de operaciones y almacen simple
- 18: Tarea con consiste en la programacion de las pantallas que corresponde al modulo DP004, estas pantallas contendran formularios para el ingreso de informacion del servicio y registro de la factura
- 19: Tarea que consiste el el modelado de la base de datos es decir la creacion de las tablas que contendran la informacion que sea registrada
- 20: tarea que consiste en la programacion backend del negocio mediante el uso de servicios web, programcionn reactiva, y vinculacion con la base de datos y a su vez con las interfaces graficas (Pantallas)
- 22: DP005 - Modulo de seguridad, permite el registro de la informacion de las entradas y salidas en general (personas, equipos, mercaderia, etc)
- 23: Tarea con consiste en la programacion de las pantallas que corresponde al modulo DP005, estas pantallas contendran formularios para el registro del proceso de seguridad
- 24: Tarea que consiste el el modelado de la base de datos es decir la creacion de las tablas que contendran la informacion que sea registrada
- 25: tarea que consiste en la programacion backend del negocio mediante el uso de servicios web, programcionn reactiva, y vinculacion con la base de datos y a su vez con las interfaces graficas (Pantallas)

| ID | WBS | Task | Duration | Start | Finish | Predecessors |
| --- | --- | --- | --- | --- | --- | --- |
| 26 | 3.2 | **DP006 - Asistencia** | 23d | 2025-01-08 | 2025-02-07 | 22 |
| 27 | 3.2.1 | Diseño y programacion de las interfaces graficas | 10d | 2025-01-08 | 2025-01-21 |  |
| 28 | 3.2.2 | Modelado de la base de datos | 1d | 2025-01-22 | 2025-01-22 | 27 |
| 29 | 3.2.3 | Programacion del negocio (Backend) | 12d | 2025-01-23 | 2025-02-07 | 28 |
| 30 | 3.3 | **DP007 - RRHH v1** | 23d | 2025-02-10 | 2025-03-12 |  |
| 31 | 3.3.1 | Diseño y programacion de las interfaces graficas | 10d | 2025-02-10 | 2025-02-21 | 26 |
| 32 | 3.3.2 | Modelado de la base de datos | 1d | 2025-02-24 | 2025-02-24 | 31 |
| 33 | 3.3.3 | Programacion del negocio (Backend) | 12d | 2025-02-25 | 2025-03-12 | 32 |

Notes:
- 26: DP006 - Modulo de Asistencia para los trabajadores de la empresa, y el registro de servicios, comisiones, permisos entre otros
- 27: Tarea con consiste en la programacion de las pantallas que corresponde al modulo DP006, estas pantallas contendran formularios para el registro del proceso de seguridad
- 28: Tarea que consiste el el modelado de la base de datos es decir la creacion de las tablas que contendran la informacion que sea registrada
- 29: tarea que consiste en la programacion backend del negocio mediante el uso de servicios web, programcionn reactiva, y vinculacion con la base de datos y a su vez con las interfaces graficas (Pantallas)
- 30: DP007 - Este modulo permite obtener la informacion de las asistencias, permisos, comisiones de servicio del modulo de seguridad para que sirva de insumo para llevar un control del personal, esta es version 1 dado que este sistema seguira crecienndo de acuerdo a las funncionalidades que se necesiten hacer
- 31: Tarea con consiste en la programacion de las pantallas que corresponde al modulo DP007, estas pantallas contendran formularios para el registro del proceso de seguridad
- 32: Tarea que consiste el el modelado de la base de datos es decir la creacion de las tablas que contendran la informacion que sea registrada
- 33: tarea que consiste en la programacion backend del negocio mediante el uso de servicios web, programcion reactiva, y vinculacion con la base de datos y a su vez con las interfaces graficas (Pantallas)
